# PeNcIL – Planirani raspored aktivnosti

Schedule from MS Project, 2007-03-19 to 2007-06-03, 4 hours a day.
SWETeam

## Calendars

- Standard: Mon-Sun 16:00-18:00, 18:00-20:00.

## Resources

| Resource |
| --- |
| Architect |
| Architecture Reviewer |
| Business-Process Analyst |
| Business Designer |
| Business-Model Reviewer |
| Code Reviewer |
| Configuration Manager |
| Course Developer |
| Database Designer |
| Deployment Manager |
| Design Reviewer |
| Designer |
| Implementer |
| Integration Tester |
| Performance Tester |
| Process Engineer |
| Project Manager |
| Requirements Reviewer |
| Stakeholder |
| System Administrator |
| System Analyst |
| System Integrator |
| System Tester |
| Technical Writer |
| Test Designer |
| Tool Smith |
| Use-Case Author |
| User-Interface Designer |

## Schedule

| ID | WBS | Task | Type | Duration | Start | Finish | Predecessors | Baseline start | Baseline finish | Baseline duration | Total slack | Free slack |
| --- | --- | --- | --- | --- | --- | --- | --- | --- | --- | --- | --- | --- |
| 1 | 1 | **Očekivani rezultati** |  | 77d | 2007-03-19 | 2007-06-03 |  | 1998-06-11 | 1998-10-19 | 186d | 0d |  |
| 2 | 1.1 | Početak projekta | milestone | 0d | 2007-03-19 | 2007-03-19 | 16SS | 1998-06-11 | 1998-06-11 | 0d | 77d |  |
| 3 | 1.2 | Vizija sistema | milestone | 0d | 2007-03-25 | 2007-03-25 | 19 | 1998-06-17 | 1998-06-17 | 0d | 70d |  |
| 4 | 1.3 | Dokument o zahtevima | milestone | 0d | 2007-04-08 | 2007-04-08 | 25 |  |  |  | 56d |  |
| 5 | 1.4 | Arhitekturni prototip | milestone | 0d | 2007-04-11 | 2007-04-11 | 26 |  |  |  | 53d |  |
| 6 | 1.5 | Prototip korisničkog interfejsa | milestone | 0d | 2007-04-15 | 2007-04-15 | 28 |  |  |  | 49d |  |
| 7 | 1.6 | Arhitekturni projekat | milestone | 0d | 2007-04-22 | 2007-04-22 | 29 | 1998-08-20 | 1998-08-20 | 0d | 42d |  |
| 8 | 1.7 | Detaljni projekat | milestone | 0d | 2007-05-06 | 2007-05-06 | 33 | 1998-10-06 | 1998-10-06 | 0d | 28d |  |
| 9 | 1.8 | Beta verzija | milestone | 0d | 2007-05-09 | 2007-05-09 | 34 | 1998-10-19 | 1998-10-19 | 0d | 25d |  |
| 10 | 1.9 | Plan testiranja | milestone | 0d | 2007-05-13 | 2007-05-13 | 35 |  |  |  | 21d |  |
| 11 | 1.10 | Izveštaj o testiranju | milestone | 0d | 2007-05-20 | 2007-05-20 | 41 |  |  |  | 14d |  |
| 12 | 1.11 | Konačna verzija | milestone | 0d | 2007-05-20 | 2007-05-20 | 38 |  |  |  | 14d |  |
| 13 | 1.12 | Korisničko uputstvo | milestone | 0d | 2007-06-02 | 2007-06-02 | 46 |  |  |  | 1d |  |
| 14 | 1.13 | Prezentacija proizvoda | milestone | 0d | 2007-06-03 | 2007-06-03 | 44 |  |  |  | 0d |  |
| 16 | 2 | **Faza planiranja projekta** |  | 14d | 2007-03-19 | 2007-04-01 |  | 1998-06-11 | 1998-06-17 | 10d | 0d |  |
| 17 | 2.1 | **Preliminarna iteracija** |  | 14d | 2007-03-19 | 2007-04-01 |  | 1998-06-11 | 1998-06-17 | 10d | 0d |  |
| 18 | 2.1.1 | Definisanje zahteva |  | 3d | 2007-03-19 | 2007-03-21 |  | 1998-06-11 | 1998-06-15 | 6d | 0d |  |
| 19 | 2.1.2 | Izrada vizije sistema |  | 4d | 2007-03-22 | 2007-03-25 | 18 | 1998-06-11 | 1998-06-17 | 10d | 0d |  |
| 20 | 2.1.3 | Modelovanje domena |  | 1d | 2007-03-26 | 2007-03-26 | 19 | 1998-06-11 | 1998-06-17 | 10d | 0d |  |
| 21 | 2.1.4 | Analiza slučajeva korišćenja |  | 6d | 2007-03-27 | 2007-04-01 | 20 | 1998-06-19 | 1998-06-23 | 6d | 0d |  |
| 23 | 3 | **Faza razrade projekta** |  | 21d | 2007-04-02 | 2007-04-22 | 16 | 1998-06-18 | 1998-08-20 | 92d | 0d |  |
| 24 | 3.1 | **Iteracija R1 - Razvoj arhitekturnog prototipa** |  | 21d | 2007-04-02 | 2007-04-22 |  | 1998-06-18 | 1998-07-20 | 46d | 0d |  |
| 25 | 3.1.1 | Izrada dokumenta o zahtevima |  | 7d | 2007-04-02 | 2007-04-08 |  | 1998-06-19 | 1998-06-25 | 10d | 14d | 0d |
| 26 | 3.1.2 | Implementacija arhitekturnog prototipa |  | 10d | 2007-04-02 | 2007-04-11 |  | 1998-07-01 | 1998-07-10 | 16d | 0d |  |
| 27 | 3.1.3 | Testiranje arhitekture |  | 1d | 2007-04-12 | 2007-04-12 | 26 | 1998-07-08 | 1998-07-16 | 14d | 0d |  |
| 28 | 3.1.4 | Implementacija prototipa korisničkog interfejsa |  | 3d | 2007-04-13 | 2007-04-15 | 27 | 1998-06-18 | 1998-07-20 | 46d | 0d |  |
| 29 | 3.1.5 | Izrada arhitekturnog projekta |  | 7d | 2007-04-16 | 2007-04-22 | 28 | 1998-06-23 | 1998-07-06 | 20d | 0d |  |

| ID | WBS | Task | Duration | Start | Finish | Predecessors | Baseline start | Baseline finish | Baseline duration | Total slack | Free slack |
| --- | --- | --- | --- | --- | --- | --- | --- | --- | --- | --- | --- |
| 31 | 4 | **Faza izrade projekta** | 28d | 2007-04-23 | 2007-05-20 | 23 | 1998-08-21 | 1998-10-06 | 66d | 0d |  |
| 32 | 4.1 | **Iteracija I1 - Razvoj beta verzije** | 23d | 2007-04-23 | 2007-05-15 |  | 1998-08-21 | 1998-09-04 | 22d | 0d |  |
| 33 | 4.1.1 | Izrada detaljnog projekta | 14d | 2007-04-23 | 2007-05-06 |  |  |  |  | 9d | 0d |
| 34 | 4.1.2 | Implementacija beta verzije | 17d | 2007-04-23 | 2007-05-09 |  | 1998-08-24 | 1998-08-31 | 12d | 0d |  |
| 35 | 4.1.3 | Izrada plana testiranja | 4d | 2007-05-10 | 2007-05-13 | 34 |  |  |  | 0d |  |
| 36 | 4.1.4 | Testiranje sistema | 2d | 2007-05-14 | 2007-05-15 | 35 | 1998-08-24 | 1998-09-02 | 16d | 0d |  |
| 37 | 4.1.5 | Izrada izveštaja o testiranju | 2d | 2007-05-14 | 2007-05-15 | 35 | 1998-08-21 | 1998-09-04 | 22d | 0d |  |
| 38 | 4.2 | **Iteracija I2 - Razvoj konačne verzije** | 5d | 2007-05-16 | 2007-05-20 | 32 | 1998-09-07 | 1998-09-21 | 22d | 0d |  |
| 39 | 4.2.1 | Implementacija konačne verzije | 4d | 2007-05-16 | 2007-05-19 |  | 1998-09-08 | 1998-09-15 | 12d | 0d |  |
| 40 | 4.2.2 | Testiranje konačne verzije | 1d | 2007-05-20 | 2007-05-20 | 39 | 1998-09-08 | 1998-09-17 | 16d | 0d |  |
| 41 | 4.2.3 | Ažuriranje izveštaja o testiranju | 1d | 2007-05-20 | 2007-05-20 | 39 | 1998-09-07 | 1998-09-21 | 22d | 0d |  |
| 43 | 5 | **Faza okončanja projekta** | 14d | 2007-05-21 | 2007-06-03 | 38 | 1998-10-07 | 1998-10-19 | 18d | 0d |  |
| 44 | 5.1 | **Iteracija O1 - Instalacija sistema** | 14d | 2007-05-21 | 2007-06-03 |  | 1998-10-07 | 1998-10-19 | 18d | 0d |  |
| 45 | 5.1.1 | Sređivanje projektne dokumentacije | 7d | 2007-05-21 | 2007-05-27 |  |  |  |  | 0d |  |
| 46 | 5.1.2 | Izrada korisničkog uputstva | 6d | 2007-05-28 | 2007-06-02 | 45 | 1998-10-07 | 1998-10-19 | 18d | 0d |  |
| 47 | 5.1.3 | Instalacija sistema | 1d | 2007-06-03 | 2007-06-03 | 46 |  |  |  | 0d |  |
